# lampada_inteligente

Schedule from MS Project, 2024-08-01 to 2024-12-17, costs in R$.

## Calendars

- Padrão: Mon-Fri 09:00-12:00, 13:00-18:00; Sat-Sun off.

## Resources

| Resource | Rate |
| --- | --- |
| Gerente de Projetos | 150 |
| Engenheiro de Software | 150 |
| Engenheiro de Computação | 150 |
| Publicitário | 100 |
| Visual Studio Enterprise | 1000 |
| Licença do Modelo de Visão Computacional | 60000 |

## Schedule

| ID | WBS | Task | Type | Duration | Start | Finish | Predecessors | Total slack | Resources | Work | Cost |
| --- | --- | --- | --- | --- | --- | --- | --- | --- | --- | --- | --- |
| 1 | 1 | **Iniciação** |  | 0.75d | 2024-08-01 | 2024-08-01 |  | 0d |  | 24h | 3,500 |
| 2 | 1.1 | Reunião de Kickoff | manual | 4h | 2024-08-01 | 2024-08-01 |  |  | Engenheiro de Software; Gerente de Projetos | 8h | 1,200 |
| 3 | 1.2 | Reunião com a equipe | manual | 2h | 2024-08-01 | 2024-08-01 | 2 |  | Engenheiro de Computação [400%]; Engenheiro de Software [200%]; Gerente de Projetos; Publicitário | 16h | 2,300 |
| 4 | 2 | **Levantamento de Requisitos** |  | 21d | 2024-08-01 | 2024-08-30 |  | 0d |  | 376h | 54,400 |
| 5 | 2.1 | Pesquisa de Mercado | manual | 5d | 2024-08-01 | 2024-08-08 | 1 |  | Publicitário | 40h | 4,000 |
| 6 | 2.2 | Estudo do Modelo de Visão Computacional | manual | 3d | 2024-08-01 | 2024-08-06 | 1 |  | Engenheiro de Software; Engenheiro de Computação | 48h | 7,200 |
| 7 | 2.3 | Definição de Requisitos | manual | 3d | 2024-08-08 | 2024-08-13 | 5 |  | Gerente de Projetos; Engenheiro de Computação; Engenheiro de Software | 72h | 10,800 |
| 8 | 2.4 | Validação de Requisitos | manual | 1d | 2024-08-13 | 2024-08-14 | 7 |  | Gerente de Projetos; Engenheiro de Software | 16h | 2,400 |
| 9 | 2.5 | Prototipagem de Software | manual | 10d | 2024-08-14 | 2024-08-28 | 8 |  | Engenheiro de Software [200%]; Gerente de Projetos [50%] | 200h | 30,000 |
| 10 | 2.6 | Fim do Levantamento de Requisitos | milestone, manual | 0d | 2024-08-30 | 2024-08-30 | 9FS+2d |  |  |  |  |
| 11 | 3 | **Desenvolvimento do Sistema** |  | 34d | 2024-08-30 | 2024-10-17 |  | 0d | Visual Studio Enterprise | 916h | 198,400 |
| 12 | 3.1 | Configuração do Ambiente | manual | 3d | 2024-08-30 | 2024-09-04 | 4 |  | Engenheiro de Software [200%] | 48h | 7,200 |
| 13 | 3.2 | Treinamento do Modelo | manual | 19d | 2024-09-04 | 2024-10-01 | 12 |  | Engenheiro de Software [150%]; Licença do Modelo de Visão Computacional; Engenheiro de Computação | 380h | 117,000 |
| 14 | 3.3 | Desenvolvimento do Backend do Servidor | manual | 14d | 2024-09-10 | 2024-09-30 | 12FS+4d |  | Engenheiro de Software [150%] | 168h | 25,200 |
| 15 | 3.4 | Visualizações e Design de Frontend | manual | 10d | 2024-09-10 | 2024-09-24 | 12FS+4d |  | Engenheiro de Software | 80h | 12,000 |
| 16 | 3.5 | Ajustes das Visualizações para Multiplataforma | manual | 2d | 2024-09-25 | 2024-09-27 | 15FS+1d |  | Engenheiro de Software | 16h | 2,400 |
| 17 | 3.6 | Validação do Modelo | manual | 3d | 2024-10-01 | 2024-10-04 | 13 |  | Engenheiro de Software [200%]; Engenheiro de Computação | 72h | 10,800 |
| 18 | 3.7 | Integração das Camadas do Sistema | manual | 4d | 2024-10-04 | 2024-10-10 | 17, 13, 14, 15, 16 |  | Engenheiro de Software [300%]; Engenheiro de Computação | 128h | 19,200 |
| 19 | 3.8 | Testes | manual | 3d | 2024-10-10 | 2024-10-15 | 18 |  | Engenheiro de Software | 24h | 3,600 |
| 20 | 3.9 | Fim do Desenvolvimento do App | milestone, manual | 0d | 2024-10-17 | 2024-10-17 | 19FS+2d |  |  |  |  |
| 21 | 4 | **Integração e Testes** |  | 21d | 2024-10-17 | 2024-11-15 |  | 0d | Gerente de Projetos [20%] | 336h | 50,400 |
| 22 | 4.1 | Integração com o Sistema de Câmeras Providenciado | manual | 10d | 2024-10-17 | 2024-10-31 | 20 |  | Engenheiro de Computação [200%] | 160h | 24,000 |
| 23 | 4.2 | Testes de Sistema | manual | 5d | 2024-10-31 | 2024-11-07 | 22 |  | Engenheiro de Computação; Engenheiro de Software | 80h | 12,000 |
| 24 | 4.3 | Ajustes com base nos Testes e Feedback | manual | 3d | 2024-11-07 | 2024-11-12 | 23 |  | Engenheiro de Computação; Engenheiro de Software | 48h | 7,200 |
| 25 | 4.4 | Testes Finais | manual | 2d | 2024-11-08 | 2024-11-12 | 24FF |  | Engenheiro de Computação; Engenheiro de Software | 32h | 4,800 |
| 26 | 4.5 | Fim da Integração | milestone, manual | 0d | 2024-11-15 | 2024-11-15 | 24, 25FS+3d |  |  |  |  |

Notes:
- 2: Reunião inicial com os investidores sobre marcos e cronograma do projeto.
- 11: Foi colocado os gastos com as licenças de material de desenvolvimento nesta linha.
- 21: O Gerente iria, por 2 dias, visitar o escritório para avaliar a integração

| ID | WBS | Task | Type | Duration | Start | Finish | Predecessors | Total slack | Resources | Work | Cost |
| --- | --- | --- | --- | --- | --- | --- | --- | --- | --- | --- | --- |
| 27 | 5 | **Lançamento do Produto** |  | 22d | 2024-11-15 | 2024-12-17 |  | 0d |  | 184h | 21,600 |
| 28 | 5.1 | Reunião com os Investidores | manual | 1d | 2024-11-15 | 2024-11-18 | 26 |  | Engenheiro de Computação; Engenheiro de Software; Gerente de Projetos; Publicitário | 32h | 4,400 |
| 29 | 5.2 | Marketing | manual | 7d | 2024-11-18 | 2024-11-27 | 28 |  | Publicitário | 56h | 5,600 |
| 30 | 5.3 | Pesquisa de aprovação | manual | 7d | 2024-11-27 | 2024-12-06 | 29 |  | Publicitário | 56h | 5,600 |
| 31 | 5.4 | Contratos com Revendedores | manual | 5d | 2024-11-27 | 2024-12-04 | 29 |  | Gerente de Projetos | 40h | 6,000 |
| 32 | 5.5 | Lançamento Oficial | milestone, manual | 0d | 2024-12-17 | 2024-12-17 | 30FS+7d, 31 |  |  |  |  |

Notes:
- 32: Tempo de latência para contemplar atrasos em partes anteriores
